# lr4BALANCing

Schedule from MS Project, 2022-03-01 to 2022-07-25, status date 2022-04-20, costs in ₽, A marks actual dates.
HP
Команда разработчиков из 16 человек занимается созданием карты города на основе собственного модуля отображения. Проект должен быть завершен в течение 6 месяцев. Бюджен проекта: 50 000 рублей.

## Calendars

- Стандартный: Mon-Fri 09:00-13:00, 14:00-18:00; Sat-Sun off. Exceptions (off unless hours are given): 2022-03-07 to 2022-03-08 (Международный женский день), 2022-05-01 to 2022-05-03 (Майские), 2022-05-09 to 2022-05-10 (День победы), 2022-06-12 to 2022-06-13 (День России).

## Resources

| Resource | Group | Rate | Cost per use |
| --- | --- | --- | --- |
| Ведущий программист | Программирование | 10 | 100 |
| Программист#1 | Программирование | 7 | 50 |
| Программист#2 | Программирование | 7 | 50 |
| Программист#3 | Программирование | 7 | 50 |
| Программист#4 | Программирование | 7 | 50 |
| Системный аналитик | Анализ | 20 | 300 |
| Художник-дизайнер | Дизайн | 8 | 70 |
| Технический писатель | Документация | 5 | 20 |
| Web-дизайнер | Internet | 7 | 50 |
| 3D аниматор | Дизайн | 8 | 70 |
| Мультимедиа-корреспондент | М-медиа | 3 | 20 |
| Наборщик данных#1 | Ввод данных | 2 | 10 |
| Наборщик данных#2 | Ввод данных | 2 | 10 |
| Наборщик данных#3 | Ввод данных | 2 | 10 |
| Наборщик данных#4 | Ввод данных | 2 | 10 |
| Наборщик данных#5 | Ввод данных | 2 | 10 |
| Сервер |  | 2 |  |

## Schedule

| ID | WBS | Task | Type | Duration | Start | Finish | Predecessors | Complete | Remaining | Baseline start | Baseline finish | Baseline duration | Total slack | Free slack | Constraint | Resources | Work | Actual work | Cost | Baseline cost | Actual cost |
| --- | --- | --- | --- | --- | --- | --- | --- | --- | --- | --- | --- | --- | --- | --- | --- | --- | --- | --- | --- | --- | --- |
| 1 | 1 | Начало проекта | milestone | 0w | 2022-03-01 09:00 | 2022-03-01 09:00 |  |  |  | 2022-03-01 09:00 | 2022-03-01 09:00 |  | 34.62d | 0d |  |  |  |  |  |  |  |
| 2 | 2 | **Создание интерфейса** |  | 73.2d | 2022-03-01 09:00 | 2022-06-21 10:35 | 1 |  |  | 2022-03-01 09:00 | 2022-06-21 11:38 | 73.33d | 1.41d | 12.2d |  |  | 560h |  | 5,650 | 5,650 |  |
| 3 | 2.1 | **Разработка дизайна интерфейса** |  | 39.12d | 2022-03-01 09:00 | 2022-04-27 10:00 |  |  |  | 2022-03-01 09:00 | 2022-04-07 16:00 | 25.75d | 27.75d | 0d |  |  | 320h |  | 2,770 | 2,770 |  |
| 4 | 2.1.1 | Разработка 2D графических элементов |  | 3w | 2022-03-01 09:00 | 2022-03-24 13:00 |  |  |  | 2022-03-01 09:00 | 2022-03-24 13:00 | 3w | 34.62d | 0d |  | Художник-дизайнер | 120h |  | 1,030 | 1,030 |  |
| 5 | 2.1.2 | Разработка 3D графических элементов |  | 2w | 2022-03-01 09:00 | 2022-03-17 12:00 | 4SS |  |  | 2022-03-01 09:00 | 2022-03-17 12:00 | 2w | 34.62d | 6d |  | 3D аниматор | 80h |  | 710 | 710 |  |
| 6 | 2.1.3 | Создание заставки |  | 3w | 2022-04-06 10:00 | 2022-04-27 10:00 | 5 |  |  | 2022-03-17 12:00 | 2022-04-07 16:00 | 3w | 27.75d | 36.75d | finish no earlier than 2022-04-14 18:00 | 3D аниматор | 120h |  | 1,030 | 1,030 |  |
| 7 | 2.2 | Программирование интерфейса |  | 1.5w | 2022-06-08 15:35 | 2022-06-21 10:35 | 3, 12 |  |  | 2022-06-08 16:38 | 2022-06-21 11:38 | 1.5w | 1.41d | 0d |  | Программист#3; Программист#4; Программист#1; Программист#2 | 240h |  | 1,880 | 1,880 |  |
| 8 | 3 | **Построение базы объектов** |  | 77.75d | 2022-03-31 09:00 A | 2022-07-25 16:00 |  | 5% | 73.99d | 2022-03-24 14:00 | 2022-07-19 11:00 | 77.75d | 0d |  |  | Сервер | 5511h | 255.05h | 15,212 | 15,240 | 1,360.09 |
| 9 | 3.1 | Анализ и построение структруы базы объектов |  | 2w | 2022-03-31 09:00 | 2022-04-14 11:00 |  |  |  | 2022-03-24 14:00 | 2022-04-07 16:00 | 2w | 3.75d | 0d | start no earlier than 2022-03-31 09:00 | Системный аналитик | 80h |  | 1,900 | 1,900 |  |
| 10 | 3.2 | Программирование средств обработки базы объектов |  | 1.5w | 2022-04-14 11:00 A | 2022-04-25 16:00 | 9 | 50% | 0.75w | 2022-04-07 16:00 | 2022-04-19 11:00 | 1.5w | 0d |  |  | Программист#3; Программист#4; Программист#1; Программист#2 | 240h | 120h | 1,880 | 1,880 | 1,040 |
| 11 | 3.3 | Наполнение базы объектов |  | 12w | 2022-04-25 16:00 | 2022-07-25 16:00 | 10 |  |  | 2022-04-19 11:00 | 2022-07-19 11:00 | 12w | 0d |  |  | Наборщик данных#1; Наборщик данных#2; Наборщик данных#3; Наборщик данных#4; Наборщик данных#5 | 2400h |  | 4,850 | 4,850 |  |
| 12 | 4 | **Создание ядра GIS** |  | 65.7d | 2022-03-01 09:00 | 2022-06-08 15:35 |  |  |  | 2022-03-01 09:00 | 2022-06-08 16:38 | 65.83d | 1.41d | 0d |  |  | 1880h |  | 18,434.4 | 18,196.78 |  |
| 13 | 4.1 | Анализ и проектирование ядра |  | 3w | 2022-03-01 09:00 | 2022-03-24 13:00 |  |  |  | 2022-03-01 09:00 | 2022-03-24 13:00 | 3w | 1.41d | 0d |  | Ведущий программист; Системный аналитик | 240h |  | 4,000 | 4,000 |  |
| 14 | 4.2 | Создание модели ядра |  | 2.2w | 2022-03-24 14:00 | 2022-04-08 14:01 | 13 |  |  | 2022-03-24 14:00 | 2022-04-20 09:01 | 2.2w | 1.41d | 0d |  | Ведущий программист; Программист#1; Программист#2; Программист#3; Программист#4 | 400h |  | 3,303.91 | 3,303.91 |  |
| 15 | 4.3 | Тестирование модели ядра |  | 0.25w | 2022-04-08 14:01 | 2022-04-11 16:01 | 14 |  |  | 2022-04-20 09:01 | 2022-04-21 11:01 | 0.25w | 1.41d | 0d |  | Программист#1; Программист#2; Программист#3; Программист#4 | 40h |  | 480 | 480 |  |
| 16 | 4.4 | Создание рабочей версии ядра |  | 7.56w | 2022-04-11 16:01 | 2022-06-08 15:35 | 15 |  |  | 2022-04-21 11:01 | 2022-06-08 16:38 | 6.12w | 1.41d | 12.2d |  | Ведущий программист; Программист#1; Программист#2; Программист#3; Программист#4 | 1200h |  | 9,650.49 | 9,412.87 |  |
| 17 | 5 | Создание мультимедиа - наполнения |  | 6w | 2022-04-27 10:00 | 2022-06-15 18:00 | 3 |  |  | 2022-04-07 16:00 | 2022-05-26 15:00 | 6w | 27.75d | 36.75d |  | Мультимедиа-корреспондент | 240h |  | 740 | 740 |  |
| 18 | 6 | Создание справочной системы |  | 2w | 2022-06-30 10:35 | 2022-07-14 10:35 | 7 |  |  | 2022-06-30 15:38 | 2022-07-14 17:38 | 2w | 7.55d | 22.55d |  | Технический писатель | 80h |  | 420 | 420 |  |
| 19 | 7 | **Создание руководства пользователя** |  | 17d | 2022-06-06 10:35 | 2022-06-30 10:35 | 7FS-10d |  |  | 2022-06-06 11:38 | 2022-06-30 15:38 | 17.38d | 1.41d | 12.2d |  |  | 160h |  | 1,010 | 1,010 |  |
| 20 | 7.1 | Разработка дизайна руководства |  | 1w | 2022-06-06 10:35 | 2022-06-14 11:35 |  |  |  | 2022-06-06 11:38 | 2022-06-14 12:38 | 1w | 1.41d | 0d |  | Художник-дизайнер | 40h |  | 390 | 390 |  |
| 21 | 7.2 | Написание руководства пользователя |  | 3w | 2022-06-08 10:35 | 2022-06-30 10:35 | 20SS+2d |  |  | 2022-06-08 11:38 | 2022-06-30 15:38 | 3w | 1.41d | 0d |  | Технический писатель | 120h |  | 620 | 620 |  |
| 22 | 8 | **Создание web-сайта и поддержка** |  | 23.62d | 2022-06-08 10:35 | 2022-07-12 16:35 |  |  |  | 2022-06-08 11:38 | 2022-07-12 17:38 | 23.62d | 1.41d | 0d |  |  | 248h |  | 2,106 | 2,106 |  |
| 23 | 8.1 | Разработка структуры сайта |  | 1d | 2022-06-08 10:35 | 2022-06-09 10:35 | 21SS |  |  | 2022-06-08 11:38 | 2022-06-09 11:38 | 1d | 1.41d | 0d |  | Web-дизайнер | 8h |  | 106 | 106 |  |
| 24 | 8.2 | Разработка дизайна сайта |  | 1.45w | 2022-06-09 10:35 | 2022-06-21 12:35 | 23 |  |  | 2022-06-09 11:38 | 2022-06-21 14:38 | 1.43w | 1.41d | 0d |  | 3D аниматор; Web-дизайнер; Художник-дизайнер | 120h |  | 1,110 | 1,110 |  |
| 25 | 8.3 | Наполнение сайта |  | 3w | 2022-06-21 12:35 | 2022-07-12 16:35 | 24 |  |  | 2022-06-21 14:38 | 2022-07-12 17:38 | 3w | 1.41d | 12.2d |  | Web-дизайнер | 120h |  | 890 | 890 |  |
| 26 | 9 | Тестирование сайта |  | 2.5w | 2022-07-05 16:35 | 2022-07-22 11:42 | 22FS-1w |  |  | 2022-07-05 17:38 | 2022-07-22 12:45 | 2.5w | 1.41d | 0d |  | Ведущий программист; Программист#1; Программист#2; Программист#3; Программист#4 | 480h |  | 4,036.48 | 3,942.36 |  |
| 27 | 10 | Сдача в эксплуатацию | milestone | 0w | 2022-07-22 11:42 | 2022-07-22 11:42 | 26 |  |  | 2022-07-22 12:45 | 2022-07-22 12:45 |  | 1.41d | 12.2d |  |  |  |  |  |  |  |

| ID | WBS | Task | Duration | Start | Finish | Baseline start | Baseline finish | Baseline duration | Total slack | Constraint | Resources | Work | Cost | Baseline cost |
| --- | --- | --- | --- | --- | --- | --- | --- | --- | --- | --- | --- | --- | --- | --- |
| 28 | 11 | **Совещание** | 93.12d | 2022-03-02 09:00 | 2022-07-20 10:00 | 2022-03-02 09:00 | 2022-07-20 10:00 | 93.12d | 3.62d |  |  | 91h | 725 | 1,281 |
| 29 | 11.1 | Совещание 1 | 1h | 2022-03-02 09:00 | 2022-03-02 10:00 | 2022-03-02 09:00 | 2022-03-02 10:00 | 1h | 96.62d | start no earlier than 2022-03-02 09:00 | 3D аниматор; Web-дизайнер; Ведущий программист; Мультимедиа-корреспондент; Системный аналитик; Технический писатель; Художник-дизайнер | 7h | 61 | 61 |
| 30 | 11.2 | Совещание 2 | 1h | 2022-03-09 09:00 | 2022-03-09 10:00 | 2022-03-09 09:00 | 2022-03-09 10:00 | 1h | 93.62d | start no earlier than 2022-03-09 09:00 | 3D аниматор; Web-дизайнер; Ведущий программист; Мультимедиа-корреспондент; Системный аналитик; Технический писатель; Художник-дизайнер | 7h | 61 | 61 |
| 31 | 11.3 | Совещание 3 | 1h | 2022-03-16 09:00 | 2022-03-16 10:00 | 2022-03-16 09:00 | 2022-03-16 10:00 | 1h | 88.62d | start no earlier than 2022-03-16 09:00 | 3D аниматор; Web-дизайнер; Ведущий программист; Мультимедиа-корреспондент; Системный аналитик; Технический писатель; Художник-дизайнер | 7h | 61 | 61 |
| 32 | 11.4 | Совещание 4 | 1h | 2022-03-23 09:00 | 2022-03-23 10:00 | 2022-03-23 09:00 | 2022-03-23 10:00 | 1h | 83.62d | start no earlier than 2022-03-23 09:00 | 3D аниматор; Web-дизайнер; Ведущий программист; Мультимедиа-корреспондент; Системный аналитик; Технический писатель; Художник-дизайнер | 7h | 61 | 61 |
| 33 | 11.5 | Совещание 5 | 1h | 2022-03-30 09:00 | 2022-03-30 10:00 | 2022-03-30 09:00 | 2022-03-30 10:00 | 1h | 78.62d | start no earlier than 2022-03-30 09:00 | 3D аниматор; Web-дизайнер; Ведущий программист; Мультимедиа-корреспондент; Системный аналитик; Технический писатель; Художник-дизайнер | 7h | 61 | 61 |
| 34 | 11.6 | Совещание 6 | 1h | 2022-04-06 09:00 | 2022-04-06 10:00 | 2022-04-06 09:00 | 2022-04-06 10:00 | 1h | 73.62d | start no earlier than 2022-04-06 09:00 | 3D аниматор; Web-дизайнер; Ведущий программист; Мультимедиа-корреспондент; Системный аналитик; Технический писатель; Художник-дизайнер | 5h | 48 | 61 |
| 35 | 11.7 | Совещание 7 | 1h | 2022-04-13 09:00 | 2022-04-13 10:00 | 2022-04-13 09:00 | 2022-04-13 10:00 | 1h | 68.62d | start no earlier than 2022-04-13 09:00 | 3D аниматор; Web-дизайнер; Ведущий программист; Мультимедиа-корреспондент; Системный аналитик; Технический писатель; Художник-дизайнер | 6h | 54 | 61 |
| 36 | 11.8 | Совещание 8 | 1h | 2022-04-20 09:00 | 2022-04-20 10:00 | 2022-04-20 09:00 | 2022-04-20 10:00 | 1h | 63.62d | start no earlier than 2022-04-20 09:00 | 3D аниматор; Web-дизайнер; Ведущий программист; Мультимедиа-корреспондент; Системный аналитик; Технический писатель; Художник-дизайнер | 3h | 21 | 61 |
| 37 | 11.9 | Совещание 9 | 1h | 2022-04-27 09:00 | 2022-04-27 10:00 | 2022-04-27 09:00 | 2022-04-27 10:00 | 1h | 58.62d | start no earlier than 2022-04-27 09:00 | 3D аниматор; Web-дизайнер; Ведущий программист; Мультимедиа-корреспондент; Системный аналитик; Технический писатель; Художник-дизайнер | 3h | 21 | 61 |
| 38 | 11.10 | Совещание 10 | 1h | 2022-05-04 09:00 | 2022-05-04 10:00 | 2022-05-04 09:00 | 2022-05-04 10:00 | 1h | 55.62d | start no earlier than 2022-05-04 09:00 | 3D аниматор; Web-дизайнер; Ведущий программист; Мультимедиа-корреспондент; Системный аналитик; Технический писатель; Художник-дизайнер | 3h | 21 | 61 |
| 39 | 11.11 | Совещание 11 | 1h | 2022-05-11 09:00 | 2022-05-11 10:00 | 2022-05-11 09:00 | 2022-05-11 10:00 | 1h | 52.62d | start no earlier than 2022-05-11 09:00 | 3D аниматор; Web-дизайнер; Ведущий программист; Мультимедиа-корреспондент; Системный аналитик; Технический писатель; Художник-дизайнер | 3h | 21 | 61 |
| 40 | 11.12 | Совещание 12 | 1h | 2022-05-18 09:00 | 2022-05-18 10:00 | 2022-05-18 09:00 | 2022-05-18 10:00 | 1h | 47.62d | start no earlier than 2022-05-18 09:00 | 3D аниматор; Web-дизайнер; Ведущий программист; Мультимедиа-корреспондент; Системный аналитик; Технический писатель; Художник-дизайнер | 3h | 21 | 61 |
| 41 | 11.13 | Совещание 13 | 1h | 2022-05-25 09:00 | 2022-05-25 10:00 | 2022-05-25 09:00 | 2022-05-25 10:00 | 1h | 42.62d | start no earlier than 2022-05-25 09:00 | 3D аниматор; Web-дизайнер; Ведущий программист; Мультимедиа-корреспондент; Системный аналитик; Технический писатель; Художник-дизайнер | 3h | 21 | 61 |
| 42 | 11.14 | Совещание 14 | 1h | 2022-06-01 09:00 | 2022-06-01 10:00 | 2022-06-01 09:00 | 2022-06-01 10:00 | 1h | 37.62d | start no earlier than 2022-06-01 09:00 | 3D аниматор; Web-дизайнер; Ведущий программист; Мультимедиа-корреспондент; Системный аналитик; Технический писатель; Художник-дизайнер | 3h | 21 | 61 |
| 43 | 11.15 | Совещание 15 | 1h | 2022-06-08 09:00 | 2022-06-08 10:00 | 2022-06-08 09:00 | 2022-06-08 10:00 | 1h | 32.62d | start no earlier than 2022-06-08 09:00 | 3D аниматор; Web-дизайнер; Ведущий программист; Мультимедиа-корреспондент; Системный аналитик; Технический писатель; Художник-дизайнер | 4h | 29 | 61 |
| 44 | 11.16 | Совещание 16 | 1h | 2022-06-15 09:00 | 2022-06-15 10:00 | 2022-06-15 09:00 | 2022-06-15 10:00 | 1h | 28.62d | start no earlier than 2022-06-15 09:00 | 3D аниматор; Web-дизайнер; Ведущий программист; Мультимедиа-корреспондент; Системный аналитик; Технический писатель; Художник-дизайнер | 4h | 29 | 61 |
| 45 | 11.17 | Совещание 17 | 1h | 2022-06-22 09:00 | 2022-06-22 10:00 | 2022-06-22 09:00 | 2022-06-22 10:00 | 1h | 23.62d | start no earlier than 2022-06-22 09:00 | 3D аниматор; Web-дизайнер; Ведущий программист; Мультимедиа-корреспондент; Системный аналитик; Технический писатель; Художник-дизайнер | 3h | 21 | 61 |
| 46 | 11.18 | Совещание 18 | 1h | 2022-06-29 09:00 | 2022-06-29 10:00 | 2022-06-29 09:00 | 2022-06-29 10:00 | 1h | 18.62d | start no earlier than 2022-06-29 09:00 | 3D аниматор; Web-дизайнер; Ведущий программист; Мультимедиа-корреспондент; Системный аналитик; Технический писатель; Художник-дизайнер | 3h | 21 | 61 |
| 47 | 11.19 | Совещание 19 | 1h | 2022-07-06 09:00 | 2022-07-06 10:00 | 2022-07-06 09:00 | 2022-07-06 10:00 | 1h | 13.62d | start no earlier than 2022-07-06 09:00 | 3D аниматор; Web-дизайнер; Ведущий программист; Мультимедиа-корреспондент; Системный аналитик; Технический писатель; Художник-дизайнер | 3h | 21 | 61 |
| 48 | 11.20 | Совещание 20 | 1h | 2022-07-13 09:00 | 2022-07-13 10:00 | 2022-07-13 09:00 | 2022-07-13 10:00 | 1h | 8.62d | start no earlier than 2022-07-13 09:00 | 3D аниматор; Web-дизайнер; Ведущий программист; Мультимедиа-корреспондент; Системный аналитик; Технический писатель; Художник-дизайнер | 3h | 21 | 61 |
| 49 | 11.21 | Совещание 21 | 1h | 2022-07-20 09:00 | 2022-07-20 10:00 | 2022-07-20 09:00 | 2022-07-20 10:00 | 1h | 3.62d | start no earlier than 2022-07-20 09:00 | 3D аниматор; Web-дизайнер; Ведущий программист; Мультимедиа-корреспондент; Системный аналитик; Технический писатель; Художник-дизайнер | 4h | 29 | 61 |
