Schedule from MS Project, 2022-04-04 to 2022-07-04, status date 2022-06-01, costs in р., A marks actual dates.
Microsoft

## Calendars

- Стандартный: Mon-Fri 09:00-13:00, 14:00-18:00; Sat-Sun off. Exceptions (off unless hours are given): 2022-05-02 to 2022-05-03 (Майские), 2022-05-09 to 2022-05-10 (День победы), 2022-06-13 (День России).

## Resources

| Resource | Group | Unit | Rate | Cost per use | Notes |
| --- | --- | --- | --- | --- | --- |
| Соколов | Программисты |  | 437.5 |  | Ведущий программист |
| Соломин | Программисты |  | 343.75 |  |  |
| Тимофеев | Программисты |  | 312.5 |  |  |
| Яковлева | Программисты |  | 312.5 |  |  |
| Петров | Дизайнеры |  | 468.75 |  | Руководитель дизайнерской группы |
| Кузнецов | Дизайнеры |  | 312.5 |  |  |
| Фомина | Редактор сайта |  | 250 |  |  |
| Преподаватели | Преподаватели |  | 700 |  |  |
| Программное обеспечение | ПО |  | 30000 | 5000 |  |
| Картриджи для принтера | Расходные материалы |  | 2500 |  |  |
| Бумага | Расходные материалы | пач. | 600 |  |  |

## Schedule

| ID | WBS | Task | Type | Duration | Start | Finish | Predecessors | Complete | Remaining | Baseline start | Baseline finish | Baseline duration | Total slack | Free slack | Constraint | Resources | Work | Actual work | Cost | Baseline cost | Actual cost |
| --- | --- | --- | --- | --- | --- | --- | --- | --- | --- | --- | --- | --- | --- | --- | --- | --- | --- | --- | --- | --- | --- |
| 1 | 1 | **Общее** |  | 60.5d | 2022-04-04 A | 2022-07-04 |  | 71% | 17.56d | 2022-04-04 | 2022-06-23 | 53.5d | 0d |  |  |  | 1896h | 1496h | 800,725 | 737,075 | 660,000 |
| 2 | 1.1 | Начало проекта | milestone | 0d | 2022-04-04 A | 2022-04-04 A |  | 100% |  | 2022-04-04 | 2022-04-04 | 0d |  |  |  |  |  |  |  |  |  |
| 3 | 1.2 | Установка ПО |  | 15d | 2022-04-05 A | 2022-04-25 A | 2FS+1d | 100% |  | 2022-04-05 | 2022-04-25 | 15d |  |  |  | Программное обеспечение; Соколов | 120h | 120h | 87,500 | 87,500 | 87,500 |
| 4 | 1.3 | Обучение персонала |  | 20d | 2022-04-26 A | 2022-05-27 A | 3SS+10d | 100% |  | 2022-04-19 | 2022-05-27 | 25d |  |  | start no earlier than 2022-04-19 | Бумага [1 пач.]; Картриджи для принтера; Кузнецов; Петров; Преподаватели; Соломин; Тимофеев; Яковлева; Соколов | 1120h | 1120h | 465,100 | 464,700 | 465,100 |
| 5 | 1.4 | **Разработка представительских сайтов** |  | 12d | 2022-05-30 A | 2022-06-15 | 4 | 53% | 5.6d | 2022-05-30 | 2022-06-08 | 8d | 12.5d | 0d |  |  | 120h | 64h | 38,500 | 26,000 | 20,400 |
| 6 | 1.4.1 | **Разработка сайта 1** |  | 9d | 2022-05-30 A | 2022-06-09 |  | 80% | 1.8d | 2022-05-30 | 2022-06-03 | 5d | 12.5d | 0d |  |  | 80h | 64h | 25,500 | 13,000 | 20,400 |
| 7 | 1.4.1.1 | Разработка дизайна сайта 1 |  | 7d | 2022-05-30 A | 2022-06-07 A |  | 100% |  | 2022-05-30 | 2022-05-31 | 2d |  |  |  | Кузнецов | 56h | 56h | 17,500 | 5,000 | 17,500 |
| 8 | 1.4.1.2 | Программирование сайта 1 |  | 3d | 2022-06-01 A | 2022-06-09 | 7 | 33% | 2d | 2022-06-01 | 2022-06-03 | 3d | 12.5d |  |  | Тимофеев | 24h | 8h | 7,500 | 7,500 | 2,500 |
| 9 | 1.4.2 | **Разработка сайта 2** |  | 5d | 2022-06-08 | 2022-06-15 | 6FS-2d |  |  | 2022-06-02 | 2022-06-08 | 5d | 12.5d |  |  |  | 40h |  | 13,000 | 13,000 |  |
| 10 | 1.4.2.1 | Разработка дизайна сайта 2 |  | 2d | 2022-06-08 | 2022-06-09 |  |  |  | 2022-06-02 | 2022-06-03 | 2d | 12.5d | 0d |  | Кузнецов | 16h |  | 5,000 | 5,000 |  |
| 11 | 1.4.2.2 | Программирование сайта 2 |  | 3d | 2022-06-10 | 2022-06-15 | 10 |  |  | 2022-06-06 | 2022-06-08 | 3d | 12.5d |  |  | Тимофеев | 24h |  | 7,500 | 7,500 |  |
| 12 | 1.5 | Представительские сайты созданы | milestone | 0d | 2022-06-15 | 2022-06-15 | 5 |  |  | 2022-06-08 | 2022-06-08 | 0d | 12.5d |  |  |  |  |  |  |  |  |
| 13 | 1.6 | **Разработка корпоративного сайта** |  | 24.5d | 2022-05-30 A | 2022-07-04 | 4 | 44% | 13.81d | 2022-05-30 | 2022-06-23 | 17.5d | 0d |  |  |  | 536h | 192h | 209,625 | 158,875 | 87,000 |
| 14 | 1.6.1 | Проектирование сайта |  | 12d | 2022-05-30 A | 2022-06-15 A |  | 100% |  | 2022-05-30 | 2022-06-03 | 5d |  |  |  | Петров; Соколов | 192h | 192h | 87,000 | 36,250 | 87,000 |
| 15 | 1.6.2 | Разработка сайта |  | 10d | 2022-06-16 | 2022-06-29 | 14 |  |  | 2022-06-06 | 2022-06-20 | 10d | 0d |  |  | Соломин; Яковлева; Соколов | 240h |  | 88,500 | 88,500 |  |
| 16 | 1.6.3 | Наполнение сайта |  | 3d | 2022-06-27 | 2022-06-29 | 15FS-3d |  |  | 2022-06-16 | 2022-06-20 | 3d | 0d |  |  | Фомина | 24h |  | 6,000 | 6,000 |  |
| 17 | 1.6.4 | Тестирование сайта |  | 2.5d | 2022-06-30 | 2022-07-04 | 16 |  |  | 2022-06-21 | 2022-06-23 | 2.5d | 0d |  |  | Соломин; Яковлева; Соколов; Тимофеев | 80h |  | 28,125 | 28,125 |  |
| 18 | 1.7 | Сдача сайта заказчику | milestone | 0d | 2022-07-04 | 2022-07-04 | 17 |  |  | 2022-06-23 | 2022-06-23 | 0d | 0d |  |  |  |  |  |  |  |  |
