Schedule from MS Project, 2022-04-04 to 2022-07-22, costs in р..
Microsoft

## Calendars

- Стандартный: Mon-Fri 09:00-13:00, 14:00-18:00; Sat-Sun off. Exceptions (off unless hours are given): 2022-05-02 to 2022-05-03 (Майские), 2022-05-09 to 2022-05-10 (День победы), 2022-06-13 (День России).

## Resources

| Resource | Group | Unit | Rate | Cost per use | Notes |
| --- | --- | --- | --- | --- | --- |
| Соколов | Программисты |  | 437.5 |  | Ведущий программист |
| Соломин | Программисты |  | 343.75 |  |  |
| Тимофеев | Программисты |  | 312.5 |  |  |
| Яковлева | Программисты |  | 312.5 |  |  |
| Петров | Дизайнеры |  | 468.75 |  | Руководитель дизайнерской группы |
| Кузнецов | Дизайнеры |  | 312.5 |  |  |
| Фомина | Редактор сайта |  | 250 |  |  |
| Преподаватели | Преподаватели |  | 700 |  |  |
| Программное обеспечение | ПО |  | 30000 | 5000 |  |
| Картриджи для принтера | Расходные материалы |  | 2500 |  |  |
| Бумага | Расходные материалы | пач. | 200 |  |  |

## Schedule

| ID | WBS | Task | Type | Duration | Start | Finish | Predecessors | Total slack | Free slack | Constraint | Resources | Work | Cost |
| --- | --- | --- | --- | --- | --- | --- | --- | --- | --- | --- | --- | --- | --- |
| 1 | 1 | **Общее** |  | 74.33d | 2022-04-04 | 2022-07-22 |  | 0d |  |  |  | 1744h | 726,450 |
| 2 | 1.1 | Начало проекта | milestone | 0d | 2022-04-04 | 2022-04-04 |  | 0d |  |  |  |  |  |
| 3 | 1.2 | Установка ПО |  | 25d | 2022-04-05 | 2022-05-13 | 2FS+1d | 0d |  |  | Программное обеспечение; Соколов | 120h | 87,500 |
| 4 | 1.3 | Обучение персонала |  | 38.33d | 2022-04-19 | 2022-06-17 | 3SS+10d | 0d |  | start no earlier than 2022-04-19 | Бумага [1 пач.]; Картриджи для принтера; Кузнецов; Петров; Преподаватели; Соломин; Тимофеев; Яковлева; Соколов | 1120h | 464,700 |
| 5 | 1.4 | **Разработка представительских сайтов** |  | 8d | 2022-06-17 | 2022-06-29 | 4 | 17d | 0d |  |  | 80h | 26,000 |
| 6 | 1.4.1 | **Разработка сайта 1** |  | 5d | 2022-06-17 | 2022-06-24 |  | 17d | 0d |  |  | 40h | 13,000 |
| 7 | 1.4.1.1 | Разработка дизайна сайта 1 |  | 2d | 2022-06-17 | 2022-06-21 |  | 17d | 0d |  | Кузнецов | 16h | 5,000 |
| 8 | 1.4.1.2 | Программирование сайта 1 |  | 3d | 2022-06-21 | 2022-06-24 | 7 | 17d |  |  | Тимофеев | 24h | 7,500 |
| 9 | 1.4.2 | **Разработка сайта 2** |  | 5d | 2022-06-22 | 2022-06-29 | 6FS-2d | 17d |  |  |  | 40h | 13,000 |
| 10 | 1.4.2.1 | Разработка дизайна сайта 2 |  | 2d | 2022-06-22 | 2022-06-24 |  | 17d | 0d |  | Кузнецов | 16h | 5,000 |
| 11 | 1.4.2.2 | Программирование сайта 2 |  | 3d | 2022-06-24 | 2022-06-29 | 10 | 17d |  |  | Тимофеев | 24h | 7,500 |
| 12 | 1.5 | Представительские сайты созданы | milestone | 0d | 2022-06-29 | 2022-06-29 | 5 | 17d |  |  |  |  |  |
| 13 | 1.6 | **Разработка корпоративного сайта** |  | 25d | 2022-06-17 | 2022-07-22 | 4 | 0d |  |  |  | 424h | 148,250 |
| 14 | 1.6.1 | Проектирование сайта |  | 5d | 2022-06-17 | 2022-06-24 |  | 0d |  |  | Петров; Соколов | 80h | 36,250 |
| 15 | 1.6.2 | Разработка сайта |  | 15d | 2022-06-24 | 2022-07-15 | 14 | 0d |  |  | Соломин; Яковлева | 240h | 79,750 |
| 16 | 1.6.3 | Наполнение сайта |  | 3d | 2022-07-12 | 2022-07-15 | 15FS-3d | 0d |  |  | Фомина | 24h | 6,000 |
| 17 | 1.6.4 | Тестирование сайта |  | 5d | 2022-07-15 | 2022-07-22 | 16 | 0d |  |  | Соломин; Яковлева | 80h | 26,250 |
| 18 | 1.7 | Сдача сайта заказчику | milestone | 0d | 2022-07-22 | 2022-07-22 | 17 | 0d |  |  |  |  |  |
